Schedule from ProjectLibre, 2019-05-31 to 2019-11-19.

## Calendars

- Стандартный: Mon-Fri 09:00-13:00, 14:00-18:00; Sat-Sun off.

## Resources

| Resource | Rate |
| --- | --- |
| Unassigned |  |
| Project Manager | 60 |
| Business-Aanalyst 1 | 70 |
| jr. Business-Analyst | 60 |
| Arena's Developer | 60 |
| Arena's QA Engenier | 50 |
| QR Scaner | 300 |
| Screening Frame | 700 |
| Ticket Printer | 300 |
| Vendor Software | 4000 |
| Cashier Station or POS Workstation | 300 |
| Agent Workstation | 400 |
| Turnstiles | 700 |

## Schedule

| ID | WBS | Task | Type | Duration | Start | Finish | Predecessors | Baseline start | Baseline finish | Resources |
| --- | --- | --- | --- | --- | --- | --- | --- | --- | --- | --- |
| 1 | 1 | **Automated Ticket Sales System** |  | 122d | 2019-05-31 | 2019-11-19 |  | 2009-11-16 | 2010-04-08 |  |
| 2 | 1.1 | **Project Preparation** |  | 29d | 2019-05-31 | 2019-07-10 |  | 2009-11-16 | 2009-12-14 |  |
| 3 | 1.1.1 | Stakeholder Identification |  | 12d | 2019-05-31 | 2019-06-17 |  | 2009-11-16 | 2009-11-19 | Business-Aanalyst 1 |
| 4 | 1.1.2 | Project Charter Formation |  | 5d | 2019-06-19 | 2019-06-26 | 3FS+1d | 2009-11-23 | 2009-11-27 | Business-Aanalyst 1; jr. Business-Analyst; Project Manager |
| 5 | 1.1.3 | Charter Approval |  | 2d | 2019-06-26 | 2019-06-28 | 4 | 2009-11-30 | 2009-12-01 | Business-Aanalyst 1; Project Manager |
| 6 | 1.1.4 | Baseline Project Plan Formation |  | 5d | 2019-06-28 | 2019-07-05 | 5 | 2009-12-02 | 2009-12-08 | Business-Aanalyst 1; jr. Business-Analyst; Project Manager |
| 7 | 1.1.5 | Risk Management Plan Development |  | 4d | 2019-07-05 | 2019-07-10 | 6 | 2009-12-09 | 2009-12-14 | jr. Business-Analyst |
| 8 | 1.1.6 | Communication Plan Development |  | 4d | 2019-07-05 | 2019-07-10 | 7SS | 2009-12-09 | 2009-12-14 | jr. Business-Analyst |
| 9 | 1.1.7 | Project Preparation Completed | milestone | 0d | 2019-07-10 | 2019-07-10 | 5, 8 | 2009-12-14 | 2009-12-14 |  |
| 10 | 1.2 | **Requirements Analysis** |  | 18d | 2019-07-11 | 2019-08-05 | 2 | 2009-12-15 | 2010-01-07 |  |
| 11 | 1.2.1 | Requirements Collection |  | 5d | 2019-07-11 | 2019-07-17 | 8, 9 | 2009-12-15 | 2009-12-21 | jr. Business-Analyst |
| 12 | 1.2.2 | Business Process Description |  | 5d | 2019-07-15 | 2019-07-19 | 11SS+2d | 2009-12-17 | 2009-12-23 | Business-Aanalyst 1 |
| 13 | 1.2.3 | Business Process Approval with Customer |  | 2d | 2019-07-22 | 2019-07-23 | 12 | 2009-12-24 | 2009-12-25 | Business-Aanalyst 1 |
| 14 | 1.2.4 | Functional Requirements for the System |  | 3d | 2019-07-24 | 2019-07-26 | 13 | 2009-12-28 | 2009-12-30 | jr. Business-Analyst |
| 15 | 1.2.5 | Non-Functional Requirementsльные |  | 3d | 2019-07-25 | 2019-07-29 | 14SS+1d | 2009-12-29 | 2009-12-31 | jr. Business-Analyst |
| 16 | 1.2.6 | Technical Specification Development |  | 5d | 2019-07-30 | 2019-08-05 | 14, 15 | 2010-01-01 | 2010-01-07 | Business-Aanalyst 1; jr. Business-Analyst |
| 17 | 1.2.7 | Technical Specification Approved by Customer | milestone | 0d | 2019-08-05 | 2019-08-05 | 16 | 2010-01-07 | 2010-01-07 |  |
| 18 | 1.3 | **Development** |  | 12d | 2019-08-06 | 2019-08-21 | 10 | 2010-01-08 | 2010-01-25 |  |
| 19 | 1.3.1 | Database Module Implementation |  | 5d | 2019-08-06 | 2019-08-12 | 17 | 2010-01-08 | 2010-01-14 | Arena's Developer |
| 20 | 1.3.2 | Client Web Application Design and Implementation |  | 6d | 2019-08-13 | 2019-08-20 | 19 | 2010-01-15 | 2010-01-22 | Arena's Developer |
| 21 | 1.3.3 | User Web Application Module Design and Implementation |  | 5d | 2019-08-14 | 2019-08-20 | 20SS+1d | 2010-01-18 | 2010-01-22 | Arena's Developer |
| 22 | 1.3.4 | Documentation Writing |  | 4d | 2019-08-15 | 2019-08-20 | 21SS+1d | 2010-01-19 | 2010-01-22 | jr. Business-Analyst; Arena's Developer |
| 23 | 1.3.5 | Compilation and Distribution Creation |  | 4d | 2019-08-16 | 2019-08-21 | 22SS+1d | 2010-01-20 | 2010-01-25 | Arena's Developer |
| 24 | 1.4 | **Deployment** |  | 56d | 2019-08-21 | 2019-11-08 | 18 | 2010-01-25 | 2010-03-30 |  |
| 25 | 1.4.1 | Procurement of Required IT Infrastructure |  | 20d | 2019-08-22 | 2019-09-19 |  | 2010-01-26 | 2010-02-08 | Arena's QA Engenier; Turnstiles [1000%]; Agent Workstation [400%]; Cashier Station or POS Workstation [800%]; Vendor Software; Ticket Printer [400%]; Screening Frame [1000%]; QR Scaner [800%] |
| 26 | 1.4.2 | Hardware and System Software Configuration |  | 10d | 2019-09-19 | 2019-10-02 | 25 | 2010-02-09 | 2010-02-22 | Arena's QA Engenier |
| 27 | 1.4.3 | System Deployment at Workstations |  | 10d | 2019-10-03 | 2019-10-16 | 26 | 2010-02-23 | 2010-03-08 | Arena's QA Engenier |
| 28 | 1.4.4 | User Training |  | 5d | 2019-10-17 | 2019-10-23 | 27 | 2010-03-09 | 2010-03-15 | Arena's QA Engenier |
| 29 | 1.4.5 | Pilot Industrial Operation |  | 10d | 2019-10-17 | 2019-10-30 | 27, 26 | 2010-03-09 | 2010-03-22 | Arena's QA Engenier; Arena's Developer |
| 30 | 1.4.6 | Acceptance Testing |  | 6d | 2019-10-31 | 2019-11-08 | 29 | 2010-03-23 | 2010-03-30 | Arena's Developer; Arena's QA Engenier; Business-Aanalyst 1; jr. Business-Analyst; Project Manager |
| 31 | 1.4.7 | Deployment Completed | milestone | 0d | 2019-08-21 | 2019-08-21 |  | 2010-01-25 | 2010-01-25 |  |

| ID | WBS | Task | Type | Duration | Start | Finish | Predecessors | Baseline start | Baseline finish | Resources |
| --- | --- | --- | --- | --- | --- | --- | --- | --- | --- | --- |
| 32 | 1.5 | **Project Delivery** |  | 7d | 2019-11-08 | 2019-11-19 | 24, 31 | 2010-03-31 | 2010-04-08 |  |
| 33 | 1.5.1 | Summary Review |  | 4d | 2019-11-08 | 2019-11-14 | 31 | 2010-03-31 | 2010-04-05 | Business-Aanalyst 1; Project Manager |
| 34 | 1.5.2 | Project Delivery |  | 3d | 2019-11-14 | 2019-11-19 | 33 | 2010-04-06 | 2010-04-08 | Business-Aanalyst 1; Project Manager |
| 35 | 1.5.3 | Project Completed | milestone | 0d | 2019-11-19 | 2019-11-19 | 34 | 2010-04-08 | 2010-04-08 |  |
| 36 | 1.5.4 | End of Project | milestone | 0d | 2019-11-19 | 2019-11-19 | 34 | 2010-04-08 | 2010-04-08 |  |
