# Implementation_and_Customization__Automated_Ticket_Sales_System__Sports_Arena

Schedule from MS Project, 2019-05-31 to 2019-10-23, costs in р..
Microsoft

## Calendars

- Стандартный: Mon-Fri 09:00-13:00, 14:00-18:00; Sat-Sun off.

## Resources

| Resource | Rate |
| --- | --- |
| Руководитель проекта | 2700 |
| бизнес-аналитик 1 | 1500 |
| мл. бизнес-аналитик | 1000 |
| Разработчик арены | 500 |
| Тестировщик арены | 500 |
| Сканер штрих-кода | 500000 |
| Рамка досмотра | 800000 |
| Принтер для печати билетов | 300000 |
| ПО поставщика | 3000000 |
| Рабочее место кассира | 400000 |
| Рабочее место call-менеджера | 400000 |
| Турникеты | 700000 |
| Project Manager |  |

## Schedule

| ID | WBS | Task | Type | Duration | Start | Finish | Predecessors | Baseline start | Baseline finish | Baseline duration | Total slack | Free slack | Resources | Work | Cost | Baseline cost |
| --- | --- | --- | --- | --- | --- | --- | --- | --- | --- | --- | --- | --- | --- | --- | --- | --- |
| 1 | 1 | **Automated Ticket Sales System** |  | 104d | 2019-05-31 | 2019-10-23 |  | 2009-11-16 | 2010-04-08 | 104d | 0d |  |  | 1752h | 8,096,000 | 9,796,000 |
| 2 | 1.1 | **Project Preparation** |  | 21d | 2019-05-31 | 2019-06-28 |  | 2009-11-16 | 2009-12-14 | 21d | 0d |  |  | 432h | 627,200 | 627,200 |
| 3 | 1.1.1 | Stakeholder Identification |  | 4d | 2019-05-31 | 2019-06-05 |  | 2009-11-16 | 2009-11-19 | 4d | 0d |  | бизнес-аналитик 1; мл. бизнес-аналитик; Project Manager | 96h | 80,000 | 80,000 |
| 4 | 1.1.2 | Project Charter Formation |  | 5d | 2019-06-07 | 2019-06-13 | 3FS+1d | 2009-11-23 | 2009-11-27 | 5d | 0d |  | бизнес-аналитик 1; мл. бизнес-аналитик; Руководитель проекта | 120h | 208,000 | 208,000 |
| 5 | 1.1.3 | Charter Approval |  | 2d | 2019-06-14 | 2019-06-17 | 4 | 2009-11-30 | 2009-12-01 | 2d | 0d |  | бизнес-аналитик 1; Руководитель проекта | 32h | 67,200 | 67,200 |
| 6 | 1.1.4 | Baseline Project Plan Formation |  | 5d | 2019-06-18 | 2019-06-24 | 5 | 2009-12-02 | 2009-12-08 | 5d | 0d |  | бизнес-аналитик 1; мл. бизнес-аналитик; Руководитель проекта | 120h | 208,000 | 208,000 |
| 7 | 1.1.5 | Risk Management Plan Development |  | 4d | 2019-06-25 | 2019-06-28 | 6 | 2009-12-09 | 2009-12-14 | 4d | 0d |  | мл. бизнес-аналитик | 32h | 32,000 | 32,000 |
| 8 | 1.1.6 | Communication Plan Development |  | 4d | 2019-06-25 | 2019-06-28 | 7SS | 2009-12-09 | 2009-12-14 | 4d | 0d |  | мл. бизнес-аналитик | 32h | 32,000 | 32,000 |
| 9 | 1.1.7 | Project Preparation Completed | milestone | 0d | 2019-06-28 | 2019-06-28 | 5, 8 | 2009-12-14 | 2009-12-14 | 0d | 0d |  |  |  |  |  |
| 10 | 1.2 | **Requirements Analysis** |  | 18d | 2019-07-01 | 2019-07-24 | 2 | 2009-12-15 | 2010-01-07 | 18d | 0d |  |  | 224h | 272,000 | 272,000 |
| 11 | 1.2.1 | Requirements Collection |  | 5d | 2019-07-01 | 2019-07-05 | 8, 9 | 2009-12-15 | 2009-12-21 | 5d | 0d |  | мл. бизнес-аналитик | 40h | 40,000 | 40,000 |
| 12 | 1.2.2 | Business Process Description |  | 5d | 2019-07-03 | 2019-07-09 | 11SS+2d | 2009-12-17 | 2009-12-23 | 5d | 0d |  | бизнес-аналитик 1 | 40h | 60,000 | 60,000 |
| 13 | 1.2.3 | Business Process Approval with Customer |  | 2d | 2019-07-10 | 2019-07-11 | 12 | 2009-12-24 | 2009-12-25 | 2d | 0d |  | бизнес-аналитик 1 | 16h | 24,000 | 24,000 |
| 14 | 1.2.4 | Functional Requirements for the System |  | 3d | 2019-07-12 | 2019-07-16 | 13 | 2009-12-28 | 2009-12-30 | 3d | 0d |  | мл. бизнес-аналитик | 24h | 24,000 | 24,000 |
| 15 | 1.2.5 | Non-Functional Requirementsльные |  | 3d | 2019-07-15 | 2019-07-17 | 14SS+1d | 2009-12-29 | 2009-12-31 | 3d | 0d |  | мл. бизнес-аналитик | 24h | 24,000 | 24,000 |
| 16 | 1.2.6 | Technical Specification Development |  | 5d | 2019-07-18 | 2019-07-24 | 14, 15 | 2010-01-01 | 2010-01-07 | 5d | 0d |  | бизнес-аналитик 1; мл. бизнес-аналитик | 80h | 100,000 | 100,000 |
| 17 | 1.2.7 | Technical Specification Approved by Customer | milestone | 0d | 2019-07-24 | 2019-07-24 | 16 | 2010-01-07 | 2010-01-07 | 0d | 0d |  |  |  |  |  |
| 18 | 1.3 | **Development** |  | 12d | 2019-07-25 | 2019-08-09 | 10 | 2010-01-08 | 2010-01-25 | 12d | 0d |  |  | 224h | 128,000 | 128,000 |
| 19 | 1.3.1 | Database Module Implementation |  | 5d | 2019-07-25 | 2019-07-31 | 17 | 2010-01-08 | 2010-01-14 | 5d | 0d |  | Разработчик арены | 40h | 20,000 | 20,000 |
| 20 | 1.3.2 | Client Web Application Design and Implementation |  | 6d | 2019-08-01 | 2019-08-08 | 19 | 2010-01-15 | 2010-01-22 | 6d | 0d |  | Разработчик арены | 48h | 24,000 | 24,000 |
| 21 | 1.3.3 | User Web Application Module Design and Implementation |  | 5d | 2019-08-02 | 2019-08-08 | 20SS+1d | 2010-01-18 | 2010-01-22 | 5d | 0d |  | Разработчик арены | 40h | 20,000 | 20,000 |
| 22 | 1.3.4 | Documentation Writing |  | 4d | 2019-08-05 | 2019-08-08 | 21SS+1d | 2010-01-19 | 2010-01-22 | 4d | 0d |  | мл. бизнес-аналитик; Разработчик арены | 64h | 48,000 | 48,000 |
| 23 | 1.3.5 | Compilation and Distribution Creation |  | 4d | 2019-08-06 | 2019-08-09 | 22SS+1d | 2010-01-20 | 2010-01-25 | 4d | 0d |  | Разработчик арены | 32h | 16,000 | 16,000 |
| 24 | 1.4 | **Deployment** |  | 46d | 2019-08-09 | 2019-10-14 | 18 | 2010-01-25 | 2010-03-30 | 46d | 0d |  |  | 760h | 6,833,600 | 8,533,600 |
| 25 | 1.4.1 | Procurement of Required IT Infrastructure |  | 10d | 2019-08-12 | 2019-08-23 |  | 2010-01-26 | 2010-02-08 | 10d | 0d |  | Руководитель проекта; Сканер штрих-кода; Тестировщик арены; ПО поставщика; Рабочее место call-менеджера; Рабочее место кассира; Рамка досмотра; Принтер для печати билетов; Турникеты | 160h | 6,356,000 | 8,056,000 |
| 26 | 1.4.2 | Hardware and System Software Configuration |  | 10d | 2019-08-26 | 2019-09-06 | 25 | 2010-02-09 | 2010-02-22 | 10d | 0d |  | Тестировщик арены | 80h | 40,000 | 40,000 |
| 27 | 1.4.3 | System Deployment at Workstations |  | 10d | 2019-09-09 | 2019-09-20 | 26 | 2010-02-23 | 2010-03-08 | 10d | 0d |  | Тестировщик арены | 80h | 40,000 | 40,000 |
| 28 | 1.4.4 | User Training |  | 5d | 2019-09-23 | 2019-09-27 | 27 | 2010-03-09 | 2010-03-15 | 5d | 11d | 0d | Тестировщик арены | 40h | 20,000 | 20,000 |
| 29 | 1.4.5 | Pilot Industrial Operation |  | 10d | 2019-09-23 | 2019-10-04 | 27, 26 | 2010-03-09 | 2010-03-22 | 10d | 0d |  | Тестировщик арены; Разработчик арены | 160h | 80,000 | 80,000 |
| 30 | 1.4.6 | Acceptance Testing |  | 6d | 2019-10-07 | 2019-10-14 | 29 | 2010-03-23 | 2010-03-30 | 6d | 0d |  | Разработчик арены; Тестировщик арены; бизнес-аналитик 1; мл. бизнес-аналитик; Руководитель проекта | 240h | 297,600 | 297,600 |
| 31 | 1.4.7 | Deployment Completed | milestone | 0d | 2019-08-09 | 2019-08-09 |  | 2010-01-25 | 2010-01-25 | 0d | 46d | 0d |  |  |  |  |

| ID | WBS | Task | Type | Duration | Start | Finish | Predecessors | Baseline start | Baseline finish | Baseline duration | Total slack | Resources | Work | Cost | Baseline cost |
| --- | --- | --- | --- | --- | --- | --- | --- | --- | --- | --- | --- | --- | --- | --- | --- |
| 32 | 1.5 | **Project Delivery** |  | 7d | 2019-10-15 | 2019-10-23 | 24, 31 | 2010-03-31 | 2010-04-08 | 7d | 0d |  | 112h | 235,200 | 235,200 |
| 33 | 1.5.1 | Summary Review |  | 4d | 2019-10-15 | 2019-10-18 | 31 | 2010-03-31 | 2010-04-05 | 4d | 0d | бизнес-аналитик 1; Руководитель проекта | 64h | 134,400 | 134,400 |
| 34 | 1.5.2 | Project Delivery |  | 3d | 2019-10-21 | 2019-10-23 | 33 | 2010-04-06 | 2010-04-08 | 3d | 0d | бизнес-аналитик 1; Руководитель проекта | 48h | 100,800 | 100,800 |
| 35 | 1.5.3 | Project Completed | milestone | 0d | 2019-10-23 | 2019-10-23 | 34 | 2010-04-08 | 2010-04-08 | 0d | 0d |  |  |  |  |
| 36 | 1.5.4 | End of Project | milestone | 0d | 2019-10-23 | 2019-10-23 | 34 | 2010-04-08 | 2010-04-08 | 0d | 0d |  |  |  |  |
