Schedule from ProjectLibre, 2019-01-21 to 2019-07-24.

## Calendars

- Производственный календарь 2019: Mon-Fri 09:00-13:00, 14:00-18:00; Sat-Sun off. Exceptions (off unless hours are given): 2019-03-07 to 2019-03-08, 2019-04-30 to 2019-05-03, 2019-05-08 to 2019-05-10, 2019-06-11 to 2019-06-12.

## Resources

| Resource | Group | Rate |
| --- | --- | --- |
| Не назначено |  |  |
| Бизнес-аналитик | Исполнитель | 1500 |
| Мл. бизнес-аналитик | Исполнитель | 1000 |
| Руководитель проекта | Исполнитель | 2500 |
| Программист | Исполнитель | 1500 |
| Мл. программист | Исполнитель | 1000 |
| Инженер | Исполнитель | 1500 |
| Мл. инженер | Исполнитель | 1000 |

## Schedule

| ID | WBS | Task | Type | Duration | Start | Finish | Predecessors | Constraint | Resources |
| --- | --- | --- | --- | --- | --- | --- | --- | --- | --- |
| 1 | 1 | Начало проекта | milestone | 0d | 2019-01-21 | 2019-01-21 |  |  |  |
| 2 | 2 | **Подготовка проекта** |  | 4d | 2019-01-21 | 2019-01-24 |  | finish no later than 2019-01-25 |  |
| 3 | 2.1 | Определение стейколдеров |  | 1d | 2019-01-21 | 2019-01-21 |  |  | Бизнес-аналитик |
| 4 | 2.2 | Формирование устава проекта |  | 2d | 2019-01-21 | 2019-01-22 | 3SS |  | Руководитель проекта |
| 5 | 2.3 | Согласование устава | milestone | 0d | 2019-01-24 | 2019-01-24 | 4FS+2d |  |  |
| 6 | 2.4 | Формирование базового плана проекта |  | 2d | 2019-01-23 | 2019-01-24 | 4 |  | Руководитель проекта |
| 7 | 2.5 | Формирование плана управления рисками |  | 1d | 2019-01-23 | 2019-01-23 | 4 |  | Бизнес-аналитик |
| 8 | 2.6 | Формирование плана коммуникаций |  | 1d | 2019-01-24 | 2019-01-24 | 4FS+1d |  | Бизнес-аналитик |
| 9 | 2.7 | Подготовка проекта завершена | milestone | 0d | 2019-01-24 | 2019-01-24 | 5, 6, 7, 8 |  |  |
| 10 | 3 | **Анализ требований** |  | 22d | 2019-01-25 | 2019-02-25 |  | finish no later than 2019-02-25 |  |
| 11 | 3.1 | Сбор требований |  | 8d | 2019-01-25 | 2019-02-05 | 9 |  | Мл. бизнес-аналитик; Бизнес-аналитик |
| 12 | 3.2 | Описание бизнес-процессов |  | 5d | 2019-01-31 | 2019-02-06 | 11SS+4d |  | Бизнес-аналитик |
| 13 | 3.3 | Согласование бизнес-процессов с заказчиком | milestone | 0d | 2019-02-13 | 2019-02-13 | 12FS+5d |  |  |
| 14 | 3.4 | Функциональные требования к ИС |  | 3d | 2019-02-01 | 2019-02-05 | 11SS+5d |  | Бизнес-аналитик |
| 15 | 3.5 | Нефункциональные требования |  | 3d | 2019-02-01 | 2019-02-05 | 14SS |  | Руководитель проекта |
| 16 | 3.6 | Разработка ТЗ |  | 10d | 2019-02-06 | 2019-02-19 | 15, 14 |  | Бизнес-аналитик |
| 17 | 3.7 | Техническое задание утверждено | milestone | 0d | 2019-02-25 | 2019-02-25 | 16FS+4d |  |  |
| 18 | 4 | **Проектирование и разработка** |  | 66d | 2019-02-26 | 2019-06-05 |  | finish no later than 2019-06-15 |  |
| 19 | 4.1 | Создание диаграммы прецедентов |  | 5d | 2019-02-26 | 2019-03-04 | 17 |  | Мл. бизнес-аналитик |
| 20 | 4.2 | Подготовка прототипа |  | 3d | 2019-03-05 | 2019-03-07 | 19 |  | Программист |
| 21 | 4.3 | Создание диаграммы классов |  | 2d | 2019-03-08 | 2019-03-11 | 20 |  | Бизнес-аналитик |
| 22 | 4.4 | Создание диаграммы деятельности, взаимодействия, компонентов |  | 2d | 2019-03-12 | 2019-03-13 | 21 |  | Бизнес-аналитик |
| 23 | 4.5 | Реализация модуля серверной части, тестирование, отладка |  | 10d | 2019-03-14 | 2019-03-27 | 22 |  | Программист |
| 24 | 4.6 | Реализация модуля баз данных |  | 10d | 2019-03-28 | 2019-04-10 | 23 |  | Программист |
| 25 | 4.7 | Дизайн и реализация клиентского приложения |  | 10d | 2019-04-11 | 2019-04-24 | 24 |  | Программист |
| 26 | 4.8 | Дизайн и реализация модуля веб-приложения |  | 10d | 2019-04-25 | 2019-05-08 | 25 |  | Программист |
| 27 | 4.9 | Интеграционное тестирование и отладка |  | 10d | 2019-05-09 | 2019-05-22 | 26 |  | Мл. программист |
| 28 | 4.10 | Написание документации |  | 10d | 2019-05-23 | 2019-06-05 | 27 |  | Мл. бизнес-аналитик |
| 29 | 4.11 | Компиляция и создание дистрибутива |  | 5d | 2019-05-23 | 2019-05-29 | 27 |  | Программист |
| 30 | 4.12 | Проектирование и разработка завершены | milestone | 0d | 2019-06-05 | 2019-06-05 | 29, 28 |  |  |

| ID | WBS | Task | Type | Duration | Start | Finish | Predecessors | Constraint | Resources |
| --- | --- | --- | --- | --- | --- | --- | --- | --- | --- |
| 31 | 5 | **Тестирование** |  | 20d | 2019-06-06 | 2019-07-04 |  | finish no later than 2019-07-15 |  |
| 32 | 5.1 | Модульное тестирование |  | 3d | 2019-06-06 | 2019-06-10 | 24, 30 |  | Мл. программист |
| 33 | 5.2 | Компонентное тестирование |  | 3d | 2019-06-11 | 2019-06-13 | 25, 26, 32 |  | Мл. программист |
| 34 | 5.3 | Интеграционное тестирование |  | 3d | 2019-06-14 | 2019-06-18 | 27, 33 |  | Мл. программист |
| 35 | 5.4 | Системное тестирование |  | 3d | 2019-06-19 | 2019-06-21 | 29, 34 |  | Мл. программист |
| 36 | 5.5 | Алфа тестирование |  | 3d | 2019-06-24 | 2019-06-26 | 35 |  | Мл. программист |
| 37 | 5.6 | Бета тестирование |  | 3d | 2019-06-27 | 2019-07-01 | 36 |  | Программист |
| 38 | 5.7 | Приемочное тестирование |  | 3d | 2019-07-02 | 2019-07-04 | 37 |  | Программист |
| 39 | 5.8 | Тестирование завершено | milestone | 0d | 2019-07-04 | 2019-07-04 | 38 |  |  |
| 40 | 6 | **Внедрение** |  | 91d | 2019-03-05 | 2019-07-18 |  | finish no later than 2019-07-29 |  |
| 41 | 6.1 | Закупка требуемой ИТ-инфраструктуры |  | 10d | 2019-03-05 | 2019-03-18 | 17FS+5d |  | Руководитель проекта |
| 42 | 6.2 | Оборудование для ИТ-инфраструктуры получено | milestone | 0d | 2019-04-15 | 2019-04-15 | 41FS+20d |  |  |
| 43 | 6.3 | Настройка оборудования и системного ПО |  | 2d | 2019-04-16 | 2019-04-17 | 42 |  | Инженер |
| 44 | 6.4 | Настройка и тестирование интеграции с основной системой |  | 1d | 2019-07-05 | 2019-07-05 | 39 |  | Инженер |
| 45 | 6.5 | Развертывание системы на рабочих местах |  | 1d | 2019-07-08 | 2019-07-08 | 44 |  | Мл. инженер |
| 46 | 6.6 | Обучение пользователей |  | 5d | 2019-06-27 | 2019-07-03 | 28, 36 |  | Мл. бизнес-аналитик |
| 47 | 6.7 | Опытно-промышленная эксплуатация |  | 7d | 2019-07-09 | 2019-07-17 | 45 |  |  |
| 48 | 6.8 | Приемо-сдаточные испытания |  | 1d | 2019-07-18 | 2019-07-18 | 47 |  | Инженер; Бизнес-аналитик; Руководитель проекта |
| 49 | 6.9 | Внедрение завершено | milestone | 0d | 2019-07-18 | 2019-07-18 | 48 |  |  |
| 50 | 7 | **Сдача проекта** |  | 4d | 2019-07-19 | 2019-07-24 | 49 |  |  |
| 51 | 7.1 | Подведение итогов |  | 3d | 2019-07-19 | 2019-07-23 |  |  | Руководитель проекта |
| 52 | 7.2 | Сдача проекта |  | 1d | 2019-07-24 | 2019-07-24 | 51 |  | Руководитель проекта |
| 53 | 7.3 | Проект завершен | milestone | 0d | 2019-07-24 | 2019-07-24 | 52 |  |  |
| 54 | 8 | Конец проекта | milestone | 0d | 2019-07-24 | 2019-07-24 | 50 |  |  |
